# ATC

Schedule from a web Gantt chart, 2026-04-09 to 2026-10-08.
Saturdays and Sundays are off

## Schedule

| ID | WBS | Task | Duration | Start | Finish | Predecessors | Complete | Status |
| --- | --- | --- | --- | --- | --- | --- | --- | --- |
| 2 | 1 | **app** | 42d | 2026-04-09 | 2026-06-05 |  | 2% |  |
| 3 | 1.1 | app工信部备案 | 23d | 2026-04-09 | 2026-05-11 |  |  |  |
| 4 | 1.2 | 新增功能：后台转录和悬浮字幕 | 3d | 2026-04-27 | 2026-04-29 |  | 50% |  |
| 5 | 1.3 | 优化功能：app使用引导 | 2d | 2026-04-29 | 2026-04-30 |  |  | waiting |
| 6 | 1.4 | 集成面壁的asr和ner模型 | 5d | 2026-05-04 | 2026-05-08 |  |  | waiting |
| 7 | 1.5 | 跟进国航和厦航对于app的测试，根据反馈优化功能 | 20d | 2026-05-11 | 2026-06-05 |  |  | waiting |
| 8 | 1.6 | 提交app store审核 | 5d | 2026-05-12 | 2026-05-18 | 3 |  | waiting |
| 9 | 1.7 | app推广材料准备 | 5d | 2026-05-25 | 2026-05-29 |  |  | waiting |
| 10 | 2 | **数据标注和模型迭代** | 60d | 2026-04-27 | 2026-07-17 |  |  |  |
| 11 | 2.1 | 英文数据标注 | 47d | 2026-04-27 | 2026-06-30 |  |  |  |
| 12 | 2.2 | 是否要继续找学生或标注公司做中文标注 | 30d | 2026-05-11 | 2026-06-19 |  |  | waiting |
| 13 | 2.3 | 收集部分标注数据，迭代模型 | 5d | 2026-06-01 | 2026-06-05 |  |  | waiting |
| 14 | 2.4 | 收集所有英文标注数据，迭代模型 | 8d | 2026-07-01 | 2026-07-10 | 11 |  | waiting |
| 15 | 2.5 | 确认是否需要标注更多数据 | 5d | 2026-07-13 | 2026-07-17 | 14 |  | waiting |
| 16 | 3 | **飞机连接** | 20d | 2026-05-25 | 2026-06-19 |  |  | waiting |
| 17 | 3.1 | 跟航司进一步确认ner的优化方向 | 10d | 2026-05-25 | 2026-06-05 |  |  | waiting |
| 18 | 3.2 | 确认飞机连接进度，以及ner如何跟当前航班真实数据联动 | 10d | 2026-05-25 | 2026-06-05 |  |  | waiting |
| 19 | 3.3 | 明确耳机线采购问题 | 10d | 2026-06-08 | 2026-06-19 | 18 |  | waiting |
| 20 | 3.4 | 是否集成efb | 10d | 2026-06-08 | 2026-06-19 |  |  | waiting |
| 21 | 4 | **用户测试** | 106d | 2026-05-11 | 2026-10-05 |  |  | waiting |
| 22 | 4.1 | Alpha版本内部封测 | 15d | 2026-05-11 | 2026-05-29 |  |  | waiting |
| 23 | 4.2 | 阶段一：地面沙盘与模拟机测试 | 15d | 2026-06-02 | 2026-06-22 |  |  | waiting |
| 24 | 4.3 | 阶段二：影子模式与跟飞观察 | 20d | 2026-06-23 | 2026-07-20 |  |  | waiting |
| 25 | 4.4 | 阶段三：非关键航段辅助运行 | 20d | 2026-07-22 | 2026-08-18 |  |  | waiting |
| 26 | 4.5 | 阶段四：全场景试运行与效能评估 | 30d | 2026-08-20 | 2026-09-30 |  |  | waiting |

Notes:
- 4: ipad数字系列和iphone都不能后台调用gpu，只能调用cpu转录，速度会慢很多很多，几乎不可接受；ipad air M3可以调用gpu
- 5: 以便五一后飞行员试用
- 8: 后台转录功能涉及到后台录音，可能会导致审核被拒； / 如果后台功能行不通，考虑直接集成进efb，或开发其他平台的app
- 12: 目前已有的中文标注数据分布不够广，导致模型只在这一类型的数据上效果好，在真实场景中泛化能力不够； / 标注周期长，如有必要需要尽早开始
- 18: 取决于其他团队的飞机连接进度
- 21: 分阶段用户测试，从内部Alpha到全场景商业化试运行
- 22: 核心目标：跑通核心技术，确保交到航司手里的东西不能有低级Bug。 / 执行：压力测试（高分贝噪音、iPad性能/内存/发热）、UI/UX飞行员场景优化、语音服务器稳定性验证。 / 规模：内部团队 + 1-2名飞行员顾问
- 23: 目标：验证核心算法能力、端侧稳定性，确保「能用且不添乱」。 / 执行：在地面模拟器中验证ASR/NER准确率，测试无网络环境下的端侧性能。 / 规模：1-2家航司（国航/厦航），5-10名飞行员参与
- 24: 目标：观察员验证真实机舱复杂声学环境和无网状态下的表现，不干扰真实机组操作。 / 执行：观察员随飞，记录「Say Again」频率、系统误识率、设备发热等真实数据。建立高频反馈通道，保持每日小版本迭代。 / 规模：2家航司，10-20名飞行员参与
- 25: 目标：机长、副机长验证产品的实际业务价值，降低飞行员认知负荷。 / 执行：在起飞/巡航等非关键阶段正式辅助使用，采集NASA-TLX认知负荷评分，统计关键参数复诵错误拦截次数。 / 规模：2家航司，20-50名飞行员参与
- 26: 目标：积累量化数字，证明产品价值，打造标杆案例（Case Study），准备商业化转正。 / 执行：全飞行阶段启用，系统采集「Say Again」下降率、复诵错误拦截次数、响应时间缩短等核心指标，形成可用于宣传的数据报告。 / 规模：2+家航司，50+名飞行员，覆盖国际航线重口音高密度空域

| ID | WBS | Task | Type | Duration | Start | Finish | Status |
| --- | --- | --- | --- | --- | --- | --- | --- |
| 27 | 5 | **正式发布准备** |  | 79d | 2026-06-02 | 2026-09-18 | waiting |
| 28 | 5.1 | 线材与硬件方案确认及采购 |  | 20d | 2026-06-02 | 2026-06-29 | waiting |
| 29 | 5.2 | 合规性认证准备 |  | 40d | 2026-06-23 | 2026-08-17 | waiting |
| 30 | 5.3 | 产品正式发布 | fixed end | 1d | 2026-10-08 | 2026-10-08 | waiting |

Notes:
- 27: 解决飞行员正式使用的线材、合规性等问题，准备商业化正式发布
- 28: 解决飞行员驾驶舱使用的耳机线连接方案：确认线材规格（航空标准插头适配）、供应商、采购数量及交付时间，确保正式发布时可随产品提供硬件配件
- 29: 推进航空电子设备相关合规认证，确认产品满足航司EFB使用规范及CAAC/局方对机载电子设备的合规要求；明确认证路径、所需材料及预计周期
- 30: 完成线材、合规性等问题后，面向飞行员正式商业化发布。发布时携带阶段四积累的量化数据（Say Again下降率、安全拦截次数、NASA-TLX改善等）作为核心宣传素材
